# Gantt

Schedule from MS Project, 2018-04-03 to 2018-04-03.
HP

## Calendars

- Estándar: Mon-Fri 09:00-13:00, 15:00-19:00; Sat-Sun off.

## Schedule

| ID | WBS | Task | Type | Duration | Start | Finish | Total slack |
| --- | --- | --- | --- | --- | --- | --- | --- |
| 1 | 1 | **Project Management** |  | 1d | 2018-04-03 | 2018-04-03 | 0d |
| 2 | 1.1 | Development of the project management plan | manual | 1d | 2018-04-03 | 2018-04-03 |  |
| 3 | 1.2 | **Monitoring of the Project** |  | 1d | 2018-04-03 | 2018-04-03 | 0d |
| 4 | 1.2.1 | Meetings | manual | 1d | 2018-04-03 | 2018-04-03 |  |
| 5 | 1.2.2 | Task tracking and scheduling | manual | 1d | 2018-04-03 | 2018-04-03 |  |
| 6 | 1.3 | Annual Reporting | manual | 1d | 2018-04-03 | 2018-04-03 |  |
| 7 | 1.4 | Project Implementation of risk management | manual | 1d | 2018-04-03 | 2018-04-03 |  |
| 8 | 2 | **Quality and Administration** |  | 1d | 2018-04-03 | 2018-04-03 | 0d |
| 9 | 2.1 | **Human resources** |  | 1d | 2018-04-03 | 2018-04-03 | 0d |
| 10 | 2.1.1 | Employment of the necessary staff | manual | 1d | 2018-04-03 | 2018-04-03 |  |
| 11 | 2.1.2 | Human resources management | manual | 1d | 2018-04-03 | 2018-04-03 |  |
| 12 | 2.2 | Financial Plan | manual | 1d | 2018-04-03 | 2018-04-03 |  |
| 13 | 2.3 | Documentation Management | manual | 1d | 2018-04-03 | 2018-04-03 |  |
| 14 | 2.4 | Periodic Monitoring | manual | 1d | 2018-04-03 | 2018-04-03 |  |
| 15 | 3 | **State of the Art** |  | 1d | 2018-04-03 | 2018-04-03 | 0d |
| 16 | 3.1 | Payloads | manual | 1d | 2018-04-03 | 2018-04-03 |  |
| 17 | 3.2 | Modular System | manual | 1d | 2018-04-03 | 2018-04-03 |  |
| 18 | 3.3 | Urban Development Applications | manual | 1d | 2018-04-03 | 2018-04-03 |  |
| 19 | 4 | **Product development** |  | 1d | 2018-04-03 | 2018-04-03 | 0d |
| 20 | 4.1 | **Preliminary design** |  | 1d | 2018-04-03 | 2018-04-03 | 0d |
| 21 | 4.1.1 | Payload preliminary design | manual | 1d | 2018-04-03 | 2018-04-03 |  |
| 22 | 4.1.2 | Modular system's preliminary design | manual | 1d | 2018-04-03 | 2018-04-03 |  |
| 23 | 4.1.3 | Interaction platform's preliminary design | manual | 1d | 2018-04-03 | 2018-04-03 |  |
| 24 | 4.2 | **Final Design** |  | 1d | 2018-04-03 | 2018-04-03 | 0d |
| 25 | 4.2.1 | Payload final design | manual | 1d | 2018-04-03 | 2018-04-03 |  |
| 26 | 4.2.2 | Modular system final design | manual | 1d | 2018-04-03 | 2018-04-03 |  |
| 27 | 4.2.3 | Interaction platform final design | manual | 1d | 2018-04-03 | 2018-04-03 |  |

| ID | WBS | Task | Type | Duration | Start | Finish | Total slack |
| --- | --- | --- | --- | --- | --- | --- | --- |
| 28 | 5 | **Simulation, testing, validation and quality** |  | 1d | 2018-04-03 | 2018-04-03 | 0d |
| 29 | 5.1 | Technology demonstrator prototype manufacturing | manual | 1d | 2018-04-03 | 2018-04-03 |  |
| 30 | 5.2 | Payload Validation | manual | 1d | 2018-04-03 | 2018-04-03 |  |
| 31 | 5.3 | Modular System Validation | manual | 1d | 2018-04-03 | 2018-04-03 |  |
| 32 | 5.4 | Interaction platform validation | manual | 1d | 2018-04-03 | 2018-04-03 |  |
| 33 | 5.5 | Full system prototype validation | manual | 1d | 2018-04-03 | 2018-04-03 |  |
| 34 | 5.6 | Quality of the product | manual | 1d | 2018-04-03 | 2018-04-03 |  |
| 35 | 6 | **Business planning and exploitation of results** |  | 1d | 2018-04-03 | 2018-04-03 | 0d |
| 36 | 6.1 | Market Approach | manual | 1d | 2018-04-03 | 2018-04-03 |  |
| 37 | 6.2 | Exploitation and business plans | manual | 1d | 2018-04-03 | 2018-04-03 |  |
| 38 | 7 | **Communication and dissemination strategies** |  | 1d | 2018-04-03 | 2018-04-03 | 0d |
| 39 | 7.1 | Dissemination and Communication plan | manual | 1d | 2018-04-03 | 2018-04-03 |  |
| 40 | 7.2 | On-line dissemination activities | manual | 1d | 2018-04-03 | 2018-04-03 |  |
| 41 | 7.3 | Off-line dissemination activities | manual | 1d | 2018-04-03 | 2018-04-03 |  |
| 42 | 7.4 | Dissemination materials | manual | 1d | 2018-04-03 | 2018-04-03 |  |
